# Cronograma

Schedule from MS Project, 2017-05-10 to 2017-07-02, costs in R$, A marks actual dates.
Instituto Sumaré de Educação Superior

## Calendars

- Padrão: Mon-Fri 09:00-12:00, 13:00-18:00; Sat-Sun off.

## Resources

| Resource |
| --- |
| Cleysson |
| Carlos |
| André |
| Andre |

## Schedule

| ID | WBS | Task | Duration | Start | Finish | Predecessors | Complete | Remaining | Total slack | Free slack | Constraint | Resources | Work | Actual work | Cost | Actual cost |
| --- | --- | --- | --- | --- | --- | --- | --- | --- | --- | --- | --- | --- | --- | --- | --- | --- |
| 1 | 1 | **Início do Projeto** | 24d | 2017-05-10 A | 2017-06-10 |  | 3% | 23.4d |  |  |  |  | 520h | 8h | 10,400 | 160 |
| 2 | 1.1 | **Iniciação** | 5d | 2017-05-10 A | 2017-05-16 |  | 11% | 4.44d |  |  |  |  | 88h | 8h | 1,760 | 160 |
| 3 | 1.1.1 | Definição do Projeto | 1d | 2017-05-10 | 2017-05-10 |  |  |  | 1d |  |  | Carlos | 8h |  | 160 |  |
| 4 | 1.1.2 | Levantamento de Requisitos | 2d | 2017-05-25 A | 2017-05-26 | 3 | 50% | 1d | -8d | 0d |  | Cleysson | 16h | 8h | 320 | 160 |
| 5 | 1.1.3 | Definição do Escopo | 1d | 2017-05-16 | 2017-05-16 | 7 |  |  | 0d |  |  | Carlos | 8h |  | 160 |  |
| 6 | 1.1.4 | Planejamento | 1d | 2017-05-12 | 2017-05-12 | 8 |  |  | 2d |  |  | André | 8h |  | 160 |  |
| 7 | 1.1.5 | Elaboração da tabela de Requisitos | 2d | 2017-05-12 | 2017-05-15 | 8, 3 |  |  | 0d |  |  | Cleysson | 16h |  | 320 |  |
| 8 | 1.1.6 | Elaboração do cronograma | 2d | 2017-05-10 | 2017-05-11 |  |  |  | 0d |  |  | Cleysson; André | 32h |  | 640 |  |
| 9 | 1.2 | **Execução** | 13d | 2017-05-17 | 2017-06-02 | 2 |  |  |  |  |  |  | 352h |  | 7,040 |  |
| 10 | 1.2.1 | Serviço WEB (API) e Serviço de Login | 1d | 2017-05-17 | 2017-05-17 |  |  |  | 32d |  | start no earlier than 2017-05-17 | Cleysson | 8h |  | 160 |  |
| 11 | 1.2.2 | Tela Principal | 5d | 2017-05-17 | 2017-05-23 |  |  |  | 8d |  |  | André; Carlos | 80h |  | 1,600 |  |
| 12 | 1.2.3 | Bate-papo em grupo | 1d | 2017-05-24 | 2017-05-24 | 16 |  |  | 7d |  |  | Cleysson | 8h |  | 160 |  |
| 13 | 1.2.4 | Bate-papo privado | 1d | 2017-05-22 | 2017-05-22 | 19 |  |  | 9d |  |  | Cleysson | 8h |  | 160 |  |
| 14 | 1.2.5 | Adição de contatos | 1d | 2017-05-22 | 2017-05-22 | 19 |  |  | 9d |  |  | Cleysson | 8h |  | 160 |  |
| 15 | 1.2.6 | Adição de contatos em grupo | 1d | 2017-05-24 | 2017-05-24 | 16 |  |  | 7d |  |  | Cleysson | 8h |  | 160 |  |
| 16 | 1.2.7 | Manter dados de grupo | 2d | 2017-05-22 | 2017-05-23 |  |  |  | 5d | 0d | start no earlier than 2017-05-20 | Carlos; André | 32h |  | 640 |  |
| 17 | 1.2.8 | Manter de arquivos no grupo | 3d | 2017-05-24 | 2017-05-26 | 16 |  |  | 5d |  |  | Carlos; André | 48h |  | 960 |  |
| 18 | 1.2.9 | Autorização para acesso de arquivos | 2d | 2017-05-24 | 2017-05-25 | 16 |  |  | 6d |  |  | Cleysson | 16h |  | 320 |  |
| 19 | 1.2.10 | Manter dados cadastrais | 2d | 2017-05-18 | 2017-05-19 |  |  |  | 8d | 0d | start no earlier than 2017-05-18 | Cleysson; Carlos | 32h |  | 640 |  |
| 20 | 1.2.11 | Permissão para visualização de informações do grupo | 2d | 2017-05-24 | 2017-05-25 | 16 |  |  | 6d |  |  | Cleysson | 16h |  | 320 |  |
| 21 | 1.2.12 | Permissão para visualização de dados cadastrais | 2d | 2017-05-22 | 2017-05-23 | 19 |  |  | 8d |  |  | Cleysson | 16h |  | 320 |  |
| 22 | 1.2.13 | Elaboração da documentação Técnica | 3d | 2017-06-28 | 2017-07-02 |  |  |  | 0d |  | finish no earlier than 2017-07-02 | André; Carlos; Cleysson | 72h |  | 1,440 |  |
| 23 | 1.3 | **Encerramento** | 3d | 2017-06-02 | 2017-06-07 | 9 |  |  | 2d |  |  |  | 80h |  | 1,600 |  |
| 24 | 1.3.1 | Validação e publicação do sistema | 1d | 2017-06-02 | 2017-06-05 |  |  |  | 4d |  |  | André; Carlos; Cleysson | 16h |  | 320 |  |
| 25 | 1.3.2 | Criação da apresentação | 3d | 2017-06-05 | 2017-06-07 |  |  |  | 2d |  |  | André; Carlos | 48h |  | 960 |  |
| 26 | 1.3.3 | Apresentação e Encerramento do projeto | 1d | 2017-06-02 | 2017-06-05 |  |  |  | 4d |  |  | André; Carlos; Cleysson | 16h |  | 320 |  |
